# copie QRCoffee

Schedule from MS Project, 2022-10-04 to 2023-10-02, costs in €, A marks actual dates.

## Calendars

- Standard: Mon-Fri 08:00-12:00, 13:00-17:00; Sat-Sun off. Exceptions (off unless hours are given): 2022-10-17 to 2022-10-20 (chomé), 2022-10-24 to 2022-10-28 (Chomé), 2022-11-01 to 2022-11-11 (Chomé), 2022-11-14 to 2022-11-17 (chomé), 2022-11-20 08:00-12:00, 13:00-17:00, 2023-02-12 08:00-12:00, 13:00-17:00, 2023-02-19 08:00-12:00, 13:00-17:00, 2023-02-25 08:00-12:00, 13:00-17:00, 2023-03-25 to 2023-03-26 08:00-12:00, 13:00-17:00, 2023-04-16 08:00-12:00, 13:00-17:00.

## Resources

| Resource | Rate |
| --- | --- |
| Bertrand Julien | 22 |
| Grégoire Ivars | 19.23 |
| Kevin BEGOT | 19.23 |
| PC 1 | 900 |
| PC 2 | 800 |
| PC 3 | 2400 |
| Licences outils |  |
| VPS | 6 |
| Hébergement Web : Pack Web qrcoffee.fr | 69 |
| Service Mail : Pack email qrcoffee.fr | 52.71 |

## Schedule

| ID | WBS | Task | Duration | Start | Finish | Predecessors | Complete | Remaining | Baseline start | Baseline finish | Baseline duration | Total slack | Constraint | Resources | Work | Actual work | Cost | Baseline cost | Actual cost |
| --- | --- | --- | --- | --- | --- | --- | --- | --- | --- | --- | --- | --- | --- | --- | --- | --- | --- | --- | --- |
| 1 | 1 | **QRCoffee** | 245d | 2022-10-04 A | 2023-10-02 |  | 99% | 2.03d | 2022-10-17 | 2023-01-23 | 70.25d | 0d |  | Hébergement Web : Pack Web qrcoffee.fr; Licences outils; PC 1; PC 2; PC 3; Service Mail : Pack email qrcoffee.fr | 1329h | 1317h | 31,302.58 | 16,987.5 | 31,059.92 |
| 2 | 1.1 | **Initialisation du projet** | 2.5d | 2022-10-21 A | 2022-11-18 A |  | 100% |  | 2022-10-17 | 2022-11-18 | 25d |  |  | Bertrand Julien; Grégoire Ivars; Kevin BEGOT | 60h | 60h | 1,209.2 |  | 1,209.2 |
| 3 | 1.1.1 | Proposition du projet | 0.5d | 2022-10-21 A | 2022-10-21 A |  | 100% |  | 2022-10-17 | 2022-11-17 | 4.8w |  |  |  |  |  |  |  |  |
| 4 | 1.1.2 | Approbation du projet | 0.5d | 2022-11-18 A | 2022-11-18 A | 3 | 100% |  | 2022-11-18 | 2022-11-18 | 1d |  |  |  |  |  |  |  |  |
| 5 | 1.2 | **Plannification du projet** | 80d | 2022-11-19 A | 2023-03-06 A | 2 | 100% |  | 2022-11-21 | 2022-12-05 | 10.25d |  |  |  | 149h | 149h | 3,086.87 | 7,387.5 | 3,086.87 |
| 6 | 1.2.1 | Identification des besoins | 2d | 2022-11-19 A | 2022-11-21 A |  | 100% |  | 2022-11-21 | 2022-11-21 | 1d |  | finish no earlier than 2022-11-20 |  |  |  |  |  |  |
| 7 | 1.2.2 | **étude des contraintes** | 3.38d | 2022-11-21 A | 2022-11-24 A | 6 | 100% |  | 2022-11-21 | 2022-11-24 | 3.12d |  |  | Grégoire Ivars | 25h | 25h | 480.75 | 937.5 | 480.75 |
| 8 | 1.2.2.1 | Contraintes Temporelles | 0.5d | 2022-11-21 A | 2022-11-21 A |  | 100% |  | 2022-11-21 | 2022-11-21 | 0.5d |  |  |  |  |  |  |  |  |
| 9 | 1.2.2.2 | Contraintes Matérielles | 0.5d | 2022-11-21 A | 2022-11-22 A | 8 | 100% |  | 2022-11-21 | 2022-11-22 | 0.5d |  |  |  |  |  |  |  |  |
| 10 | 1.2.2.3 | Contraintes Sécurité | 0.5d | 2022-11-21 A | 2022-11-22 A | 9 | 100% |  | 2022-11-21 | 2022-11-22 | 0.5d |  |  |  |  |  |  |  |  |
| 11 | 1.2.2.4 | Contraintes Contractuelles | 0.5d | 2022-11-22 A | 2022-11-23 A | 10 | 100% |  | 2022-11-22 | 2022-11-23 | 0.5d |  |  |  |  |  |  |  |  |
| 12 | 1.2.2.5 | Contraintes Techniques | 0.5d | 2022-11-22 A | 2022-11-23 A | 11 | 100% |  | 2022-11-22 | 2022-11-23 | 0.5d |  |  |  |  |  |  |  |  |
| 13 | 1.2.2.6 | Contraintes Performances | 0.5d | 2022-11-22 A | 2022-11-23 A | 12 | 100% |  | 2022-11-22 | 2022-11-23 | 0.5d |  |  |  |  |  |  |  |  |
| 14 | 1.2.2.7 | Contraintes Financières | 0.5d | 2022-11-23 A | 2022-11-24 A | 13 | 100% |  | 2022-11-23 | 2022-11-24 | 0.5d |  |  |  |  |  |  |  |  |
| 15 | 1.2.3 | **études du marché** | 57d | 2022-12-21 A | 2023-03-06 A | 6 | 100% |  | 2022-11-21 | 2022-11-29 | 6d |  |  |  | 24h | 24h | 505.84 | 1,800 | 505.84 |
| 16 | 1.2.3.1 | Tableau de concurrence | 1d | 2022-12-21 A | 2022-12-21 A |  | 100% |  | 2022-11-21 | 2022-11-22 | 1d |  |  | Bertrand Julien | 8h | 8h | 176 | 300 | 176 |
| 17 | 1.2.3.2 | étude Macro-économique | 0.5d | 2023-03-04 A | 2023-03-06 A | 16 | 100% |  | 2022-11-22 | 2022-11-24 | 2d |  |  | Grégoire Ivars | 4h | 4h | 76.92 | 600 | 76.92 |
| 18 | 1.2.3.3 | étude Micro-économique | 0.5d | 2023-03-05 A | 2023-03-06 A | 17 | 100% |  | 2022-11-24 | 2022-11-28 | 2d |  |  | Grégoire Ivars | 4h | 4h | 76.92 | 600 | 76.92 |
| 19 | 1.2.3.4 | Matrice SWOT | 1d | 2022-12-22 A | 2022-12-22 A | 16 | 100% |  | 2022-11-28 | 2022-11-29 | 1d |  |  | Bertrand Julien | 8h | 8h | 176 | 300 | 176 |
| 20 | 1.2.4 | Définition des objectifs | 1d | 2022-12-23 A | 2022-12-23 A | 6 | 100% |  | 2022-11-21 | 2022-11-21 | 1d |  |  | Bertrand Julien | 8h | 8h | 176 | 300 | 176 |
| 21 | 1.2.5 | Identifications des participants | 1d | 2022-12-24 A | 2022-12-26 A | 6 | 100% |  | 2022-11-21 | 2022-11-21 | 1d |  |  | Bertrand Julien | 8h | 8h | 176 | 300 | 176 |
| 22 | 1.2.6 | Distribution des rôles | 1d | 2022-12-26 A | 2022-12-26 A | 6 | 100% |  | 2022-11-21 | 2022-11-21 | 1d |  |  | Bertrand Julien | 8h | 8h | 176 | 300 | 176 |
| 23 | 1.2.7 | étude de la transversalité | 2d | 2022-12-27 A | 2022-12-28 A | 6 | 100% |  | 2022-11-21 | 2022-11-23 | 2d |  |  | Bertrand Julien | 16h | 16h | 352 | 600 | 352 |
| 24 | 1.2.8 | **Planification détailée** | 26.35d | 2022-11-23 A | 2022-12-29 A | 6 | 100% |  | 2022-11-23 | 2022-12-05 | 8d |  |  |  | 40h | 40h | 780.28 | 1,950 | 780.28 |
| 25 | 1.2.8.1 | **Description de la solution** | 25.25d | 2022-11-23 A | 2022-12-28 A | 6 | 100% |  | 2022-11-23 | 2022-11-29 | 4.5d |  |  |  | 16h | 16h | 318.76 | 750 | 318.76 |
| 26 | 1.2.8.1.1 | Alignement avec les besoins | 0.5d | 2022-11-23 A | 2022-11-23 A | 6 | 100% |  | 2022-11-23 | 2022-11-23 | 0.5d |  |  | Grégoire Ivars | 4h | 4h | 76.92 | 150 | 76.92 |
| 27 | 1.2.8.1.2 | Architectures existantes et cible | 0.5d | 2022-12-28 A | 2022-12-28 A | 6 | 100% |  | 2022-11-24 | 2022-11-29 | 1d |  |  | Bertrand Julien | 4h | 4h | 88 | 300 | 88 |
| 28 | 1.2.8.1.3 | Définir les limites | 0.5d | 2022-11-25 A | 2022-11-25 A | 26 | 100% |  | 2022-11-25 | 2022-11-25 | 0.5d |  |  | Grégoire Ivars | 4h | 4h | 76.92 | 150 | 76.92 |
| 29 | 1.2.8.1.4 | Contraintes liées a la solution | 0.5d | 2022-11-29 A | 2022-11-29 A | 28 | 100% |  | 2022-11-29 | 2022-11-29 | 0.5d |  |  | Grégoire Ivars | 4h | 4h | 76.92 | 150 | 76.92 |

| ID | WBS | Task | Type | Duration | Start | Finish | Predecessors | Complete | Remaining | Baseline start | Baseline finish | Baseline duration | Total slack | Constraint | Resources | Work | Actual work | Cost | Baseline cost | Actual cost |
| --- | --- | --- | --- | --- | --- | --- | --- | --- | --- | --- | --- | --- | --- | --- | --- | --- | --- | --- | --- | --- |
| 30 | 1.2.8.2 | **Moyen du projet** |  | 22.35d | 2022-11-29 A | 2022-12-29 A | 6 | 100% |  | 2022-11-29 | 2022-12-05 | 4d |  |  |  | 24h | 24h | 461.52 | 1,200 | 461.52 |
| 31 | 1.2.8.2.1 | Moyen humain matérielle et logistique disponible et necessaire |  | 1d | 2022-11-29 A | 2022-11-30 A | 6 | 100% |  | 2022-11-29 | 2022-11-30 | 1d |  |  | Kevin BEGOT | 8h | 8h | 153.84 |  | 153.84 |
| 32 | 1.2.8.2.2 | Compétences mobilisables ou a acquérir |  | 1d | 2022-11-30 A | 2022-12-29 A | 31 | 100% |  | 2022-11-30 | 2022-12-01 | 1d |  |  | Kevin BEGOT | 8h | 8h | 153.84 |  | 153.84 |
| 33 | 1.2.8.2.3 | **Etat des lieux des ressources disponibles** |  | 19.35d | 2022-12-02 A | 2022-12-29 A | 32 | 100% |  | 2022-12-01 | 2022-12-02 | 1d |  |  |  | 8h | 8h | 153.84 |  | 153.84 |
| 34 | 1.2.8.2.3.1 | Moyens nécessaires à la réalisation |  | 1d | 2022-12-02 A | 2022-12-29 A | 32 | 100% |  | 2022-12-02 | 2022-12-05 | 1d |  |  | Kevin BEGOT | 8h | 8h | 153.84 |  | 153.84 |
| 35 | 1.2.9 | **Méthodologie et outils de gestion** |  | 2.5d | 2022-12-29 A | 2023-01-02 A | 24 | 100% |  | 2022-11-29 | 2022-12-05 | 4d |  |  |  | 20h | 20h | 440 | 1,200 | 440 |
| 36 | 1.2.9.1 | Présentation de la méthodologie de gestion du projet |  | 2d | 2022-12-29 A | 2022-12-30 A | 24 | 100% |  | 2022-11-29 | 2022-12-01 | 2d |  |  | Bertrand Julien | 16h | 16h | 352 |  | 352 |
| 37 | 1.2.9.2 | Présentation des outils de gestion utilisés |  | 0.5d | 2023-01-01 A | 2023-01-02 A | 36 | 100% |  | 2022-12-01 | 2022-12-05 | 2d |  |  | Bertrand Julien | 4h | 4h | 88 |  | 88 |
| 38 | 1.3 | **Réalisation du projet** |  | 245d | 2022-10-04 A | 2023-10-02 | 5 | 98% | 5.1d | 2022-12-05 | 2023-01-23 | 35d | 0d |  |  | 1120h | 1108h | 22,736.8 | 9,600 | 22,494.96 |
| 39 | 1.3.1 | **Réalisation du front** |  | 122d | 2023-02-16 A | 2023-07-28 A | 5 | 100% |  | 2022-12-05 | 2022-12-28 | 17d |  |  |  | 256h | 256h | 5,122.32 | 5,100 | 5,122.32 |
| 40 | 1.3.1.1 | Mise en place de la page Accueil |  | 1d | 2023-02-25 A | 2023-03-07 A | 5 | 100% |  | 2022-12-05 | 2022-12-06 | 1d |  |  | Grégoire Ivars | 8h | 8h | 153.84 | 300 | 153.84 |
| 41 | 1.3.1.2 | Mise ne place de la page Compte utilisateur |  | 1d | 2023-02-18 A | 2023-02-19 A | 66 | 100% |  | 2022-12-06 | 2022-12-07 | 1d |  | finish no earlier than 2023-02-19 | Bertrand Julien | 8h | 8h | 176 | 300 | 176 |
| 42 | 1.3.1.3 | Mise en place de la page de création de QRCode |  | 1d | 2023-02-25 A | 2023-03-06 A | 57, 78 | 100% |  | 2022-12-07 | 2022-12-09 | 2d |  | finish no earlier than 2023-02-25 | Bertrand Julien | 8h | 8h | 176 | 600 | 176 |
| 43 | 1.3.1.4 | Mise en place de la page de création de Vcard | manual | 1d | 2023-05-26 A | 2023-05-27 A | 57, 78 | 100% |  | 2022-12-07 | 2022-12-09 | 2d |  | finish no earlier than 2023-02-25 | Bertrand Julien | 8h | 8h | 176 | 600 | 176 |
| 44 | 1.3.1.5 | Mise en place de la page de création de QRCode localisation |  | 1d | 2023-07-08 A | 2023-07-09 A | 57, 78 | 100% |  | 2022-12-07 | 2022-12-09 | 2d |  | start no earlier than 2023-07-08 | Bertrand Julien | 8h | 8h | 176 | 600 | 176 |
| 45 | 1.3.1.6 | Mise en place de la page QRCode Vcard Créé dans l'espace mon compte |  | 1d | 2023-05-27 A | 2023-05-27 A | 57, 78 | 100% |  | 2022-12-21 | 2022-12-23 | 2d |  | start no earlier than 2023-05-27 | Bertrand Julien | 8h | 8h | 176 | 600 | 176 |
| 46 | 1.3.1.7 | Mise en place de la page QRCode Paypal Créé dans l'espace mon compte |  | 1d | 2023-05-27 A | 2023-05-27 A | 57, 78 | 100% |  | 2022-12-21 | 2022-12-23 | 2d |  | start no earlier than 2023-05-27 | Bertrand Julien | 8h | 8h | 176 | 600 | 176 |
| 47 | 1.3.1.8 | Mise en place des conditions d'utilisations | manual | 1d | 2023-03-07 A | 2023-03-07 A | 5 | 100% |  |  |  |  |  |  | Kevin BEGOT | 8h | 8h | 153.84 |  | 153.84 |
| 48 | 1.3.1.9 | Mise en place de la page QRCode Créé dans l'espace mon compte | manual | 2d | 2023-04-04 A | 2023-04-05 A | 57, 78 | 100% |  | 2022-12-21 | 2022-12-23 | 2d |  | start no earlier than 2023-02-27 | Bertrand Julien | 16h | 16h | 352 | 600 | 352 |
| 49 | 1.3.1.10 | Réalisation du Header |  | 1d | 2023-02-16 A | 2023-02-16 A | 5 | 100% |  | 2022-12-23 | 2022-12-26 | 1d |  |  | Bertrand Julien | 8h | 8h | 176 | 300 | 176 |
| 50 | 1.3.1.11 | Réalisation de la charte graphique | manual | 5d | 2023-03-06 A | 2023-03-10 A | 5 | 100% |  |  |  |  |  |  | Grégoire Ivars | 40h | 40h | 769.2 |  | 769.2 |
| 51 | 1.3.1.12 | Refonte graphique du projet |  | 10d | 2023-06-24 A | 2023-07-06 A | 50 | 100% |  |  |  |  |  |  | Grégoire Ivars | 80h | 80h | 1,538.4 |  | 1,538.4 |
| 52 | 1.3.1.13 | Réalisation du footer |  | 1d | 2023-02-16 A | 2023-02-16 A |  | 100% |  | 2022-12-27 | 2022-12-28 | 1d |  |  | Grégoire Ivars | 8h | 8h | 153.84 | 300 | 153.84 |
| 53 | 1.3.1.14 | Remplacement de keycloak par Clerks |  | 1d | 2023-07-25 A | 2023-07-25 A |  | 100% |  | 2022-12-27 | 2022-12-28 | 1d |  |  | Grégoire Ivars; Bertrand Julien | 8h | 8h | 153.84 | 300 | 153.84 |
| 54 | 1.3.1.15 | Implementation de la page "Espace QRCode" |  | 4d | 2023-07-25 A | 2023-07-28 A |  | 100% |  | 2022-12-27 | 2022-12-28 | 1d |  | finish no earlier than 2023-07-28 | Kevin BEGOT | 32h | 32h | 615.36 | 300 | 615.36 |

| ID | WBS | Task | Type | Duration | Start | Finish | Predecessors | Complete | Baseline start | Baseline finish | Baseline duration | Constraint | Resources | Work | Actual work | Cost | Baseline cost | Actual cost |
| --- | --- | --- | --- | --- | --- | --- | --- | --- | --- | --- | --- | --- | --- | --- | --- | --- | --- | --- |
| 55 | 1.3.2 | **Réalisation du Back** |  | 197d | 2022-10-04 A | 2023-07-26 A | 5 | 100% | 2022-12-05 | 2022-12-20 | 11d |  |  | 544h | 544h | 11,017.68 | 4,500 | 11,017.68 |
| 56 | 1.3.2.1 | **Mise en place de l'API** |  | 197d | 2022-10-04 A | 2023-07-26 A |  | 100% | 2022-12-05 | 2022-12-20 | 11d |  |  | 544h | 544h | 11,017.68 | 4,500 | 11,017.68 |
| 57 | 1.3.2.1.1 | **Mise en place de la base de donnée** |  | 90.75d | 2022-12-05 A | 2023-04-03 A |  | 100% | 2022-12-05 | 2022-12-06 | 1d |  |  | 16h | 16h |  | 900 |  |
| 58 | 1.3.2.1.1.1 | Mise en place de la migration |  | 1d | 2023-04-03 A | 2023-04-03 A | 5 | 100% |  |  |  |  | Kevin BEGOT | 8h | 8h |  |  |  |
| 59 | 1.3.2.1.1.2 | Dimensionnement de la Base de donnée |  | 1d | 2022-12-05 A | 2022-12-06 A | 5 | 100% | 2022-12-05 | 2022-12-06 | 1d |  | Bertrand Julien | 8h | 8h |  | 900 |  |
| 60 | 1.3.2.1.2 | Dockerisation du back-end | manual | 1d | 2022-10-04 A | 2022-10-04 A | 5 | 100% |  |  |  |  | Bertrand Julien; Grégoire Ivars; Kevin BEGOT | 24h | 24h | 483.68 |  | 483.68 |
| 61 | 1.3.2.1.3 | Mise en place d'un serveur de mail | manual | 1d | 2023-06-01 A | 2023-06-01 A | 5 | 100% |  |  |  |  | Bertrand Julien | 8h | 8h | 176 |  | 176 |
| 62 | 1.3.2.1.4 | Implémentation du serveur de mail dans keycloak | manual | 1d | 2023-06-01 A | 2023-06-01 A | 61 | 100% |  |  |  |  | Bertrand Julien | 8h | 8h | 176 |  | 176 |
| 63 | 1.3.2.1.5 | Mise en place des filtres pour les qrcode et Vcard affiché dans l'espace compte | manual | 3d | 2023-06-19 A | 2023-06-21 A | 46, 78, 45 | 100% |  |  |  |  | Kevin BEGOT | 24h | 24h | 461.52 |  | 461.52 |
| 64 | 1.3.2.1.6 | Recherche sur la mise en place de l'hébergement de l'API sur AWS | manual | 15d | 2023-03-31 A | 2023-04-19 A | 60 | 100% |  |  |  |  | Kevin BEGOT | 120h | 120h | 2,307.6 |  | 2,307.6 |
| 65 | 1.3.2.1.7 | Recherche sur la mise en place du deploiement automatique sur AWS | manual | 7d | 2023-05-01 A | 2023-05-09 A | 64 | 100% |  |  |  |  | Kevin BEGOT | 56h | 56h | 1,076.88 |  | 1,076.88 |
| 66 | 1.3.2.1.8 | Mise en place de l'authentification |  | 5d | 2023-02-18 A | 2023-02-23 A | 5 | 100% | 2022-12-13 | 2022-12-20 | 5d |  | Bertrand Julien | 40h | 40h | 880 | 1,500 | 880 |
| 67 | 1.3.2.1.9 | Récupérer les Qrcode en base |  | 1d | 2023-04-08 A | 2023-04-08 A | 78 | 100% |  |  |  |  | Bertrand Julien | 8h | 8h | 176 |  | 176 |
| 68 | 1.3.2.1.10 | Stockage QRCode en base |  | 1d | 2023-04-09 A | 2023-04-09 A | 67, 78 | 100% |  |  |  |  | Bertrand Julien | 8h | 8h | 176 |  | 176 |
| 69 | 1.3.2.1.11 | Suppression des Qrcodes stockés |  | 2d | 2023-04-15 A | 2023-04-16 A | 68, 78 | 100% |  |  |  |  | Bertrand Julien | 16h | 16h | 352 |  | 352 |
| 70 | 1.3.2.1.12 | Récupérer les Qrcode Vcard en base |  | 1d | 2023-05-26 A | 2023-05-26 A | 78 | 100% |  |  |  |  | Bertrand Julien | 8h | 8h | 176 |  | 176 |
| 71 | 1.3.2.1.13 | Stockage QRCode Vcard en base |  | 1d | 2023-05-26 A | 2023-05-26 A | 70, 78 | 100% |  |  |  |  | Bertrand Julien | 8h | 8h | 176 |  | 176 |
| 72 | 1.3.2.1.14 | Suppression des Qrcodes Vcard stockés |  | 2d | 2023-05-26 A | 2023-05-29 A | 71, 78 | 100% |  |  |  |  | Bertrand Julien | 16h | 16h | 352 |  | 352 |
| 73 | 1.3.2.1.15 | Récupérer les Qrcode Localisation en base | manual | 1d | 2023-04-17 A | 2023-04-17 A | 78 | 100% |  |  |  |  | Bertrand Julien | 8h | 8h | 176 |  | 176 |
| 74 | 1.3.2.1.16 | Stockage QRCode Localisation en base | manual | 1d | 2023-04-18 A | 2023-04-18 A | 78, 73 | 100% |  |  |  |  | Bertrand Julien | 8h | 8h | 176 |  | 176 |
| 75 | 1.3.2.1.17 | Suppression des Qrcodes localisation stockés | manual | 2d | 2023-04-19 A | 2023-04-20 A | 74, 78 | 100% |  |  |  |  | Bertrand Julien | 16h | 16h | 352 |  | 352 |
| 76 | 1.3.2.1.18 | Recherche hébergement | manual | 4d | 2023-05-18 A | 2023-05-23 A | 5 | 100% |  |  |  |  | Bertrand Julien | 32h | 32h | 704 |  | 704 |
| 77 | 1.3.2.1.19 | Mise en place de l'hébergement | manual | 4d | 2023-05-18 A | 2023-05-23 A | 5 | 100% |  |  |  |  | Bertrand Julien | 32h | 32h | 704 |  | 704 |
| 78 | 1.3.2.1.20 | Création des Routes |  | 7d | 2023-04-08 A | 2023-04-16 A | 5 | 100% | 2022-12-06 | 2022-12-13 | 5d | finish no earlier than 2023-04-16 | Bertrand Julien | 56h | 56h | 1,232 | 1,500 | 1,232 |
| 79 | 1.3.2.1.21 | Sécurisation des Routes |  | 2d | 2023-03-25 A | 2023-03-26 A | 66, 78 | 100% | 2022-12-13 | 2022-12-15 | 2d | finish no earlier than 2023-03-26 | Bertrand Julien | 16h | 16h | 352 | 600 | 352 |
| 80 | 1.3.2.1.22 | Remplacement de keycloak par Clerks |  | 2d | 2023-07-25 A | 2023-07-26 A | 66, 78 | 100% | 2022-12-13 | 2022-12-15 | 2d | finish no earlier than 2023-03-26 | Bertrand Julien | 16h | 16h | 352 | 600 | 352 |

| ID | WBS | Task | Duration | Start | Finish | Predecessors | Complete | Remaining | Baseline start | Baseline finish | Baseline duration | Total slack | Constraint | Resources | Work | Actual work | Cost | Actual cost |
| --- | --- | --- | --- | --- | --- | --- | --- | --- | --- | --- | --- | --- | --- | --- | --- | --- | --- | --- |
| 81 | 1.3.3 | **Test / Validation** | 40d | 2023-06-26 A | 2023-08-18 A | 39, 55 | 100% |  | 2022-12-28 | 2022-12-30 | 2d |  |  |  | 80h | 80h | 1,760 | 1,760 |
| 82 | 1.3.3.1 | Mise en place des tests FrontEnd | 5d | 2023-06-26 A | 2023-06-30 A |  | 100% |  |  |  |  |  | start no earlier than 2023-06-26 | Bertrand Julien | 40h | 40h | 880 | 880 |
| 83 | 1.3.3.2 | Mise en place des tests BackEnd | 5d | 2023-08-14 A | 2023-08-18 A |  | 100% |  |  |  |  |  | start no earlier than 2023-08-14 | Bertrand Julien | 40h | 40h | 880 | 880 |
| 84 | 1.3.4 | **Rédaction des livrables** | 10d | 2023-03-14 A | 2023-03-25 |  | 95% | 0.5d | 2022-12-30 | 2023-01-13 | 10d | 138d |  |  | 240h | 228h | 4,836.8 | 4,594.96 |
| 85 | 1.3.4.1 | Cahier des charges | 10d | 2023-03-14 A | 2023-03-25 |  | 95% | 0.5d | 2022-12-30 | 2023-01-13 | 10d | 138d |  | Bertrand Julien; Grégoire Ivars; Kevin BEGOT | 240h | 228h | 4,836.8 | 4,594.96 |
| 86 | 1.3.5 | Réalisation du powerPoint | 1d | 2023-09-01 | 2023-09-01 |  |  |  | 2023-01-13 | 2023-01-20 | 5d | 21d | start no earlier than 2023-09-01 |  |  |  |  |  |
| 87 | 1.3.6 | Examen Final | 1d | 2023-10-02 | 2023-10-02 |  |  |  | 2023-01-20 | 2023-01-23 | 1d | 0d | start no earlier than 2023-10-02 |  |  |  |  |  |
| 88 | 1.4 | **VPS** | 140d | 2022-10-21 A | 2023-05-19 A |  | 100% |  |  |  |  |  |  |  |  |  | 48 | 48 |
| 89 | 1.4.1 | VPS | 1mo | 2022-10-21 A | 2022-12-12 A |  | 100% |  |  |  |  |  |  | VPS |  |  | 6 | 6 |
| 90 | 1.4.2 | VPS | 1mo | 2022-12-13 A | 2023-01-09 A | 89 | 100% |  |  |  |  |  |  | VPS |  |  | 6 | 6 |
| 91 | 1.4.3 | VPS | 1mo | 2023-01-10 A | 2023-02-06 A | 90 | 100% |  |  |  |  |  |  | VPS |  |  | 6 | 6 |
| 92 | 1.4.4 | VPS | 1mo | 2023-02-07 A | 2023-03-01 A | 91 | 100% |  |  |  |  |  |  | VPS |  |  | 6 | 6 |
| 93 | 1.4.5 | VPS | 1mo | 2023-03-02 A | 2023-03-27 A | 92 | 100% |  |  |  |  |  |  | VPS |  |  | 6 | 6 |
| 94 | 1.4.6 | VPS | 1mo | 2023-03-28 A | 2023-04-21 A | 93 | 100% |  |  |  |  |  |  | VPS |  |  | 6 | 6 |
| 95 | 1.4.7 | VPS | 1mo | 2023-04-24 A | 2023-05-19 A | 94 | 100% |  |  |  |  |  |  | VPS |  |  | 6 | 6 |
| 96 | 1.4.8 | VPS | 1mo | 2022-10-21 A | 2022-12-12 A | 95 | 100% |  |  |  |  |  |  | VPS |  |  | 6 | 6 |
